# 软件研发

Schedule from a web Gantt chart, 2024-07-01 to 2024-08-30.
Saturdays and Sundays are off

## Schedule

| ID | WBS | Task | Duration | Start | Finish | Predecessors | Status | inPeople |
| --- | --- | --- | --- | --- | --- | --- | --- | --- |
| 2 | 1 | **SR1620** | 45d | 2024-07-01 | 2024-08-30 |  | waiting |  |
| 3 | 1.1 | **需求/设计** | 15d | 2024-07-01 | 2024-07-19 |  | waiting | 张帅 |
| 4 | 1.1.1 | 研发需求 | 10d | 2024-07-01 | 2024-07-12 |  | waiting |  |
| 5 | 1.1.2 | UI/UE | 5d | 2024-07-15 | 2024-07-19 | 4 | waiting |  |
| 6 | 1.2 | **软件开发** | 20d | 2024-07-15 | 2024-08-09 |  | waiting | 朱海丰 |
| 7 | 1.2.1 | 技术方案 | 3d | 2024-07-15 | 2024-07-17 | 4 | waiting |  |
| 8 | 1.2.2 | 设计规格书 | 1d | 2024-07-18 | 2024-07-18 | 7 | waiting |  |
| 9 | 1.2.3 | 代码实现 | 15d | 2024-07-19 | 2024-08-08 | 8 | waiting |  |
| 10 | 1.2.4 | 单元测试 | 1d | 2024-08-09 | 2024-08-09 | 9 | waiting |  |
| 11 | 1.3 | **软件集成** | 5d | 2024-08-12 | 2024-08-16 |  | waiting | 刘鑫蕊 |
| 12 | 1.3.1 | 集成计划 | 1d | 2024-08-12 | 2024-08-12 | 10 | waiting |  |
| 13 | 1.3.2 | 集成测试 | 3d | 2024-08-13 | 2024-08-15 | 12 | waiting |  |
| 14 | 1.3.3 | 集成报告 | 1d | 2024-08-16 | 2024-08-16 | 13 | waiting |  |
| 15 | 1.4 | **软件测试** | 10d | 2024-08-19 | 2024-08-30 |  | waiting | 靳争 |
| 16 | 1.4.1 | 测试计划 | 2d | 2024-08-19 | 2024-08-20 | 14 | waiting |  |
| 17 | 1.4.2 | 软件测试 | 5d | 2024-08-21 | 2024-08-27 | 16 | waiting |  |
| 18 | 1.4.3 | 测试报告 | 1d | 2024-08-28 | 2024-08-28 | 17 | waiting |  |
| 19 | 1.4.4 | 901 | 1d | 2024-08-29 | 2024-08-29 | 18 | waiting |  |
| 20 | 1.4.5 | RHF | 1d | 2024-08-30 | 2024-08-30 | 19 | waiting |  |
| 21 | 2 | **SR1420/SR1420-i** | 8d | 2024-08-01 | 2024-08-12 |  | waiting |  |
| 22 | 2.1 | **需求/设计** | 2d | 2024-08-01 | 2024-08-02 |  | waiting | 张帅 |
| 23 | 2.1.1 | 研发需求 | 1d | 2024-08-01 | 2024-08-01 |  | waiting |  |
| 24 | 2.1.2 | UI/UE | 1d | 2024-08-02 | 2024-08-02 | 23 | waiting |  |
| 25 | 2.2 | **软件开发** | 4d | 2024-08-02 | 2024-08-07 |  | waiting | 朱海丰 |
| 26 | 2.2.1 | 技术方案 | 1d | 2024-08-02 | 2024-08-02 | 23 | waiting |  |
| 27 | 2.2.2 | 设计规格书 | 1d | 2024-08-05 | 2024-08-05 | 26 | waiting |  |
| 28 | 2.2.3 | 代码实现 | 1d | 2024-08-06 | 2024-08-06 | 27 | waiting |  |
| 29 | 2.2.4 | 单元测试 | 1d | 2024-08-07 | 2024-08-07 | 28 | waiting |  |

Notes:
- 2: 高
- 21: 中

| ID | WBS | Task | Duration | Start | Finish | Predecessors | inPeople | Status |
| --- | --- | --- | --- | --- | --- | --- | --- | --- |
| 30 | 2.3 | **软件集成** | 3d | 2024-08-08 | 2024-08-12 |  | 刘鑫蕊 | waiting |
| 31 | 2.3.1 | 集成计划 | 1d | 2024-08-08 | 2024-08-08 | 29 |  | waiting |
| 32 | 2.3.2 | 集成测试 | 1d | 2024-08-09 | 2024-08-09 | 31 |  | waiting |
| 33 | 2.3.3 | 集成报告 | 1d | 2024-08-12 | 2024-08-12 | 32 |  | waiting |
| 34 | 2.4 | **软件测试** | 1d | 2024-08-06 | 2024-08-06 |  | 靳争 | waiting |
| 35 | 2.4.1 | 测试计划 | 1d | 2024-08-06 | 2024-08-06 |  |  | waiting |
| 36 | 2.4.2 | 软件测试 | 1d | 2024-08-06 | 2024-08-06 |  |  | waiting |
| 37 | 2.4.3 | 测试报告 | 1d | 2024-08-06 | 2024-08-06 |  |  | waiting |
| 38 | 2.4.4 | 901 | 1d | 2024-08-06 | 2024-08-06 |  |  | waiting |
| 39 | 2.4.5 | RHF | 1d | 2024-08-06 | 2024-08-06 |  |  | waiting |
| 40 | 3 | **SR2202** | 1d | 2024-08-01 | 2024-08-01 |  |  | waiting |
| 41 | 3.1 | 需求/设计 | 1d | 2024-08-01 | 2024-08-01 |  |  | waiting |
| 42 | 3.2 | 软件开发 | 1d | 2024-08-01 | 2024-08-01 |  |  | waiting |
| 43 | 3.3 | 软件集成 | 1d | 2024-08-01 | 2024-08-01 |  |  | waiting |
| 44 | 3.4 | 软件测试 | 1d | 2024-08-01 | 2024-08-01 |  |  | waiting |
| 45 | 4 | **SR1633** | 1d | 2024-08-01 | 2024-08-01 |  |  | waiting |
| 46 | 4.1 | 需求/设计 | 1d | 2024-08-01 | 2024-08-01 |  |  | waiting |
| 47 | 4.2 | 软件开发 | 1d | 2024-08-01 | 2024-08-01 |  |  | waiting |
| 48 | 4.3 | 软件集成 | 1d | 2024-08-01 | 2024-08-01 |  |  | waiting |
| 49 | 4.4 | 软件测试 | 1d | 2024-08-01 | 2024-08-01 |  |  | waiting |
| 50 | 5 | **客服系统** | 1d | 2024-08-01 | 2024-08-01 |  |  | waiting |
| 51 | 5.1 | 需求/设计 | 1d | 2024-08-01 | 2024-08-01 |  |  | waiting |
| 52 | 5.2 | 软件开发 | 1d | 2024-08-01 | 2024-08-01 |  |  | waiting |
| 53 | 5.3 | 软件集成 | 1d | 2024-08-01 | 2024-08-01 |  |  | waiting |
| 54 | 5.4 | 软件测试 | 1d | 2024-08-01 | 2024-08-01 |  |  | waiting |

Notes:
- 40: 中
- 45: 低
- 50: 低

| ID | WBS | Task | Duration | Start | Finish | Status |
| --- | --- | --- | --- | --- | --- | --- |
| 55 | 6 | **远程LFP采集** | 1d | 2024-08-01 | 2024-08-01 | waiting |
| 56 | 6.1 | 需求/设计 | 1d | 2024-08-01 | 2024-08-01 | waiting |
| 57 | 6.2 | 软件开发 | 1d | 2024-08-01 | 2024-08-01 | waiting |
| 58 | 6.3 | 软件集成 | 1d | 2024-08-01 | 2024-08-01 | waiting |
| 59 | 6.4 | 软件测试 | 1d | 2024-08-01 | 2024-08-01 | waiting |

Notes:
- 55: 低
